# ProjetSSI

How a schedule from GanttProject changed from version to version. A marks actual dates.

## Version 1 (saved 2014-01-22)

Note of the change: documents

| ID | WBS | Task | Duration | Start | Finish | Predecessors | Constraint |
| --- | --- | --- | --- | --- | --- | --- | --- |
| 1 |  | Rédaction des documents | 37d | 2013-11-27 | 2014-01-16 |  |  |
| 2 |  | Début du projet | 1d | 2014-01-17 | 2014-01-17 | 1 |  |
| 3 |  | Prise en compte des remarques sur les documents | 3d | 2014-01-20 | 2014-01-22 |  |  |
| 4 | 4 | **Développement proxy applicatif** | 10d | 2014-01-20 | 2014-01-31 | 2 |  |
| 5 |  | Développement structure proxy | 3d | 2014-01-20 | 2014-01-22 | 2 |  |
| 6 |  | Installation autorité sur client par admin | 3d | 2014-01-23 | 2014-01-27 | 2, 3 | start no earlier than 2014-01-22 |
| 7 |  | Installateur autorité sur client par client | 1d | 2014-01-23 | 2014-01-23 | 2, 3 |  |
| 8 |  | Etablissement d'une connexion chiffrée | 1d | 2014-01-23 | 2014-01-23 | 2, 5 |  |
| 9 |  | Transchiffrement des paquets | 1d | 2014-01-24 | 2014-01-24 | 8 |  |
| 10 |  | Génération d'un certificat | 1d | 2014-01-23 | 2014-01-23 | 2, 3 |  |
| 11 |  | Tests unitaires | 1d | 2014-01-28 | 2014-01-28 | 6, 8, 9, 10 |  |
| 12 |  | Rédaction de la documentation | 1d | 2014-01-28 | 2014-01-28 | 6 |  |
| 13 |  | Intégration des composants de l'application | 1d | 2014-01-28 | 2014-01-28 | 6 |  |
| 14 |  | Tests d'intégration | 1d | 2014-01-29 | 2014-01-29 | 13 |  |
| 15 |  | Livraison | 1d | 2014-01-30 | 2014-01-30 | 14 |  |
| 16 |  | Prise en compte des remarques du Client | 1d | 2014-01-31 | 2014-01-31 | 15 |  |
| 17 | 5 | **Etude forge faux certificats** | 22d | 2014-01-20 | 2014-02-18 |  |  |
| 18 |  | Etat de l'art collisions MD5 | 8d | 2014-01-20 | 2014-01-29 | 2 |  |
| 19 |  | Rapport faisabilité collision | 3d | 2014-01-30 | 2014-02-03 | 18 |  |
| 20 |  | Développement application recherche collision | 5d | 2014-02-04 | 2014-02-10 | 19 |  |
| 21 |  | Lancement programme recherche collisions | 4d | 2014-02-11 | 2014-02-14 | 20 |  |
| 22 |  | Rédaction dossier récapitulatif | 4d | 2014-02-04 | 2014-02-07 | 19 |  |
| 23 |  | Livraison | 1d | 2014-02-17 | 2014-02-17 | 21, 22 |  |
| 24 |  | Prise en compte des remarques | 1d | 2014-02-18 | 2014-02-18 | 23 |  |
| 25 |  | Livraison finale | 1d | 2014-02-19 | 2014-02-19 | 3, 24 |  |
| 26 |  | Préparation de la revue | 1d | 2014-02-20 | 2014-02-20 | 25 |  |
| 27 |  | Revue de fin de projet | 1d | 2014-02-28 | 2014-02-28 | 26 | start no earlier than 2014-02-28 |

## Version 2 (saved 2014-01-22)

Note of the change: doc

Last finish stays 2014-02-28.

Changed:

| ID | Task | Start | Finish | Duration | Predecessors | Other |
| --- | --- | --- | --- | --- | --- | --- |
| 1 | Rédaction des documents |  | 2014-01-16 → 2014-01-17 (+1d) | 37d → 38d |  | resources none → Emile; Jean-Baptiste; Julien; Ouissem; Yves |
| 2 | Début du projet | 2014-01-17 → 2014-01-20 (+3d) | 2014-01-17 → 2014-01-20 (+3d) | 1d → 0d |  | resources none → Emile; Jean-Baptiste; Julien; Ouissem; Yves |
| 3 | Prise en compte des remarques sur les documents |  |  |  |  | resources none → Emile; Jean-Baptiste; Julien; Ouissem; Yves |
| 4 | **Développement proxy applicatif** |  | 2014-01-31 → 2014-02-24 (+24d) | 10d → 26d |  | resources none → Emile; Jean-Baptiste; Julien; Ouissem |
| 5 | Développement structure proxy |  | 2014-01-22 → 2014-01-24 (+2d) | 3d → 5d |  | resources none → Emile |
| 6 | Installation autorité sur client par admin |  | 2014-01-27 → 2014-01-24 (-3d) | 3d → 2d |  | resources none → Julien |
| 7 | Installateur autorité sur client par client |  | 2014-01-23 → 2014-01-27 (+4d) | 1d → 3d |  | resources none → Emile; Ouissem |
| 8 | Etablissement d'une connexion chiffrée | 2014-01-23 → 2014-01-27 (+4d) | 2014-01-23 → 2014-01-28 (+5d) | 1d → 2d |  | resources none → Emile; Ouissem |
| 9 | Transchiffrement des paquets | 2014-01-24 → 2014-01-29 (+5d) | 2014-01-24 → 2014-02-03 (+10d) | 1d → 4d |  | resources none → Emile; Ouissem |
| 10 | Génération d'un certificat |  | 2014-01-23 → 2014-01-27 (+4d) | 1d → 3d |  | resources none → Julien |
| 11 | Tests unitaires | 2014-01-28 → 2014-02-04 (+7d) | 2014-01-28 → 2014-02-06 (+9d) | 1d → 3d |  | resources none → Jean-Baptiste |
| 12 | Rédaction de la documentation | 2014-01-28 → 2014-01-27 (-1d) | 2014-01-28 → 2014-02-07 (+10d) | 1d → 10d |  | resources none → Emile; Julien; Ouissem |
| 13 | Intégration des composants de l'application | 2014-01-28 → 2014-02-07 (+10d) | 2014-01-28 → 2014-02-12 (+15d) | 1d → 4d | 6 → 6, 9, 11 | resources none → Emile; Ouissem |
| 14 | Tests d'intégration | 2014-01-29 → 2014-02-13 (+15d) | 2014-01-29 → 2014-02-17 (+19d) | 1d → 3d | 13 → 11, 13 | resources none → Emile; Jean-Baptiste; Ouissem |
| 15 | Livraison | 2014-01-30 → 2014-02-18 (+19d) | 2014-01-30 → 2014-02-18 (+19d) |  |  | resources none → Jean-Baptiste |
| 16 | Prise en compte des remarques du Client | 2014-01-31 → 2014-02-19 (+19d) | 2014-01-31 → 2014-02-24 (+24d) | 1d → 4d |  | resources none → Emile; Julien; Ouissem |
| 17 | **Etude forge faux certificats** |  | 2014-02-18 → 2014-02-20 (+2d) | 22d → 24d |  |  |
| 18 | Etat de l'art collisions MD5 |  |  |  |  | resources none → Emile; Jean-Baptiste; Julien; Ouissem; Yves |
| 19 | Rapport faisabilité collision |  |  |  |  | resources none → Ouissem; Yves |
| 20 | Développement application recherche collision |  |  |  |  | resources none → Emile; Jean-Baptiste; Julien; Ouissem; Yves |
| 21 | Lancement programme recherche collisions |  | 2014-02-14 → 2014-02-17 (+3d) | 4d → 5d |  | resources none → Yves |
| 22 | Rédaction dossier récapitulatif |  | 2014-02-07 → 2014-02-17 (+10d) | 4d → 10d |  | resources none → Emile; Jean-Baptiste; Julien; Ouissem; Yves |
| 23 | Livraison | 2014-02-17 → 2014-02-18 (+1d) | 2014-02-17 → 2014-02-18 (+1d) |  |  | resources none → Jean-Baptiste |
| 24 | Prise en compte des remarques | 2014-02-18 → 2014-02-19 (+1d) | 2014-02-18 → 2014-02-20 (+2d) | 1d → 2d |  | resources none → Emile; Jean-Baptiste; Julien; Ouissem; Yves |
| 25 | Livraison finale | 2014-02-19 → 2014-02-21 (+2d) | 2014-02-19 → 2014-02-21 (+2d) |  |  | resources none → Emile; Jean-Baptiste; Julien; Ouissem; Yves |
| 26 | Préparation de la revue | 2014-02-20 → 2014-02-24 (+4d) | 2014-02-20 → 2014-02-27 (+7d) | 1d → 4d |  | resources none → Emile; Jean-Baptiste; Julien; Ouissem; Yves |
| 27 | Revue de fin de projet |  |  |  |  | resources none → Emile; Jean-Baptiste; Julien; Ouissem; Yves |

## Version 3 (saved 2014-01-23)

Note of the change: correction gantt

Last finish stays 2014-02-28.

Changed:

| ID | Task | Predecessors |
| --- | --- | --- |
| 10 | Transchiffrement des paquets | 9 → 8, 9 |

## Version 4 (saved 2014-02-04)

Note of the change: Merge branch 'master' of https://github.com/nouafyve/Transchiffrement-doc

Last finish 2014-02-28 → 2014-03-03 (+3d). Complete tasks 0 → 6.

Added:

| ID | Task | Duration | Start | Finish |
| --- | --- | --- | --- | --- |
| 24 | Démonstration : HTTP, colisions simples | 0d | 2014-01-30 | 2014-01-30 |
| 25 | Démonstration : connexion SSL/TLS | 0d | 2014-02-06 | 2014-02-06 |

Removed: 15 Livraison

Changed:

| ID | Task | Start | Finish | Duration | Complete | Predecessors | Other |
| --- | --- | --- | --- | --- | --- | --- | --- |
| 1 | Rédaction des documents |  |  |  | 0% → 100% |  |  |
| 3 | Prise en compte des remarques sur les documents |  |  |  | 0% → 100% |  |  |
| 4 | **Développement proxy applicatif** |  | 2014-02-24 → 2014-02-19 (-5d) | 26d → 23d | 0% → 32% |  |  |
| 5 | Développement structure proxy |  |  |  | 0% → 100% |  |  |
| 6 | Installation autorité sur client par admin |  |  |  | 0% → 100% |  |  |
| 7 | Installateur autorité sur client par client |  |  |  | 0% → 100% |  |  |
| 8 | Génération d'un certificat |  |  |  | 0% → 100% |  |  |
| 13 | Intégration des composants de l'application |  | 2014-02-12 → 2014-02-10 (-2d) | 4d → 2d |  |  |  |
| 14 | Tests d'intégration | 2014-02-13 → 2014-02-11 (-2d) | 2014-02-17 → 2014-02-11 (-6d) | 3d → 1d |  |  |  |
| 15 | Prise en compte des remarques du Client | 2014-02-19 → 2014-02-13 (-6d) | 2014-02-24 → 2014-02-19 (-5d) | 4d → 5d |  | Livraison → 23 |  |
| 16 | **Etude forge faux certificats** |  | 2014-02-20 → 2014-02-19 (-1d) | 24d → 23d | 0% → 21% |  |  |
| 17 | Etat de l'art collisions MD5 |  |  |  | 0% → 80% |  |  |
| 20 | Lancement programme recherche collisions |  | 2014-02-17 → 2014-02-12 (-5d) | 5d → 2d |  |  |  |
| 21 | Rédaction dossier récapitulatif |  | 2014-02-17 → 2014-02-12 (-5d) | 10d → 7d |  |  |  |
| 22 | Prise en compte des remarques | 2014-02-19 → 2014-02-13 (-6d) | 2014-02-20 → 2014-02-19 (-1d) | 2d → 5d |  |  |  |
| 23 | Livraison provisoire | 2014-02-18 → 2014-02-13 (-5d) | 2014-02-18 → 2014-02-13 (-5d) | 1d → 0d |  | 20, 21 → 14, 20, 21 | was named Livraison |
| 26 | Livraison finale | 2014-02-21 → 2014-02-20 (-1d) | 2014-02-21 → 2014-02-20 (-1d) | 1d → 0d |  | 3, 22 → 3, 15, 22 |  |
| 27 | Préparation de la revue | 2014-02-24 → 2014-02-20 (-4d) | 2014-02-27 → 2014-02-28 (+1d) | 4d → 7d |  |  |  |
| 28 | Revue de fin de projet | 2014-02-28 → 2014-03-03 (+3d) | 2014-02-28 → 2014-03-03 (+3d) | 1d → 0d |  |  |  |

## Version 5 (saved 2014-02-21)

Note of the change: coucou

Last finish stays 2014-03-03. Complete tasks 6 → 16.

Removed: 20 Lancement programme recherche collisions

Changed:

| ID | Task | Complete | Predecessors |
| --- | --- | --- | --- |
| 4 | **Développement proxy applicatif** | 32% → 96% |  |
| 9 | Etablissement d'une connexion chiffrée | 0% → 100% |  |
| 10 | Transchiffrement des paquets | 0% → 100% |  |
| 11 | Tests unitaires | 0% → 100% |  |
| 12 | Rédaction de la documentation | 0% → 100% |  |
| 13 | Intégration des composants de l'application | 0% → 100% |  |
| 14 | Tests d'intégration | 0% → 100% |  |
| 15 | Prise en compte des remarques du Client | 0% → 75% |  |
| 16 | **Etude forge faux certificats** | 21% → 96% |  |
| 17 | Etat de l'art collisions MD5 | 80% → 100% |  |
| 18 | Rapport faisabilité collision | 0% → 100% |  |
| 19 | Développement application recherche collision | 0% → 100% |  |
| 20 | Rédaction dossier récapitulatif | 0% → 100% |  |
| 21 | Prise en compte des remarques | 0% → 78% |  |
| 22 | Livraison provisoire |  | 14, Lancement programme recherche collisions, 20 → 14, 20 |
